# CoffeeLab

Schedule from MS Project, 2019-10-28 to 2020-06-02, status date 2020-01-07, costs in zł.

## Calendars

- Standardowy: Mon-Fri 09:00-13:00, 14:00-18:00; Sat-Sun off. Exceptions (off unless hours are given): 2019-11-11 (Święto Niepodległości), 2019-12-23 to 2019-12-27 (Przerwa Świąteczna - Boże Narodzenie), 2020-01-01 (Nowy Rok), 2020-01-06 (Święto Trzech Króli), 2020-04-09 to 2020-04-13 (Przerwa Świąteczna - Wielkanoc), 2020-05-01 (Święto Pracy).

## Resources

| Resource | Group | Rate | Cost per use | Notes |
| --- | --- | --- | --- | --- |
| Project Manager | PMS | 100 |  |  |
| HR Manager | HR | 150 |  |  |
| Project Manager Assistant | PMS | 85 |  |  |
| Senior Researcher | RSRCH | 50 |  |  |
| Researcher Assistant | RSRCH | 30 |  |  |
| HR Manager Assistant | HR | 87.5 |  |  |
| Content Writer | CNTNT | 33 |  |  |
| Documentation Writer | CNTNT | 120 |  |  |
| Senior Software Developer | SARCH | 120 |  |  |
| Junior Software Developer | SARCH | 70 |  |  |
| UI Designer | UI | 46.5 |  |  |
| UI Manual Tester | UI, TST | 50 |  |  |
| Machine Learning Engineer | ML | 110 |  |  |
| Manual Tester | TST | 50 |  |  |
| PC |  | 0.64 |  | Koszt sprzętu * 0.33 / 12 / 20. |
| Lokal |  | 50 |  | Wliczony czynsz, opłaty stałe oraz opłaty za prąd dla biura dla 13 osób z toaletą i kuchnią. Koszt przeliczony z miesięcznego (8000zł) na dni pracy |
| Oprogramowanie |  | 1.25 |  | Koszt w przeliczeniu na dni. Szacowane 200zł miesięcznie na licencje na oprogramowanie dla pracownika. |
| Telefony |  | 1.1 |  | Miesięczny koszt amortyzacji sprzetu: Koszt sprzętu * 0.33 / 12. / Założenie, że potrzebne są ok 4 różne telefony jednocześnie. |
| OS |  | 0.08 |  | Koszt miesięcznej amortyzacji systemu operacyjnego Windows w przeliczeniu na dni: Koszt systemu operacyjnego * 0.2 / 12. |
| Kawy |  | 3.61 |  | Kawy z 15 krajów, po 3 stopnie palenia z 3 regionów. Średni koszt (zawyżony) za próbkę 50g to 10zł. + 500zł za koszty przesyłkek z różnych palarni. Przeliczone na dzień. Wszystkie koszta podzielone przez ilość dni trwania badań |
| Sprzęt do kawy |  | 9.63 |  | Szacowany koszt potrzebnego sprzętu 7000zł. / Amortyzacja liczona 7000zł * 0.33 / 12 * czas trwania projektu w miesiącach. / Przeliczone na dni |
| Książki o kawie |  | 0.03 |  | Liczone dla 5 książek o średniej wartości 50zł. Koszt amortyzacji. / Wartość spadająca rocznie o 33%. Przeliczone na dni. |
| Kawa |  | 3.5 |  |  |
| Koszt zamówienia grafik |  |  | 10000 |  |
| Koszt zamówienia dźwięków |  |  | 2000 |  |

## Schedule

| ID | WBS | Task | Type | Duration | Start | Finish | Predecessors | Baseline start | Baseline finish | Baseline duration | Total slack | Free slack | Constraint | Resources | Work | Cost | Baseline cost |
| --- | --- | --- | --- | --- | --- | --- | --- | --- | --- | --- | --- | --- | --- | --- | --- | --- | --- |
| 1 | 1 | **Zarządzanie projektem** |  | 145d? | 2019-10-28 | 2020-06-02 |  | 2019-10-28 | 2020-06-02 | 145d? | 0d |  |  |  | 5046h | 170,106.49 | 170,106.49 |
| 2 | 1.1 | **Spotkanie okresowe** |  | 107.25d | 2019-10-29 | 2020-04-07 |  | 2019-10-29 | 2020-04-07 | 107.25d | 36.75d |  |  |  | 46h | 4,600 | 4,600 |
| 3 | 1.1.1 | Spotkanie okresowe 1 |  | 0.25d | 2019-10-29 | 2019-10-29 |  | 2019-10-29 | 2019-10-29 | 0.25d | 143.75d |  | start no earlier than 2019-10-29 | Project Manager | 2h | 200 | 200 |
| 4 | 1.1.2 | Spotkanie okresowe 2 |  | 0.25d | 2019-11-05 | 2019-11-05 |  | 2019-11-05 | 2019-11-05 | 0.25d | 138.75d |  | start no earlier than 2019-11-05 | Project Manager | 2h | 200 | 200 |
| 5 | 1.1.3 | Spotkanie okresowe 3 |  | 0.25d | 2019-11-12 | 2019-11-12 |  | 2019-11-12 | 2019-11-12 | 0.25d | 134.75d |  | start no earlier than 2019-11-12 | Project Manager | 2h | 200 | 200 |
| 6 | 1.1.4 | Spotkanie okresowe 4 |  | 0.25d | 2019-11-19 | 2019-11-19 |  | 2019-11-19 | 2019-11-19 | 0.25d | 129.75d |  | start no earlier than 2019-11-19 | Project Manager | 2h | 200 | 200 |
| 7 | 1.1.5 | Spotkanie okresowe 5 |  | 0.25d | 2019-11-26 | 2019-11-26 |  | 2019-11-26 | 2019-11-26 | 0.25d | 124.75d |  | start no earlier than 2019-11-26 | Project Manager | 2h | 200 | 200 |
| 8 | 1.1.6 | Spotkanie okresowe 6 |  | 0.25d | 2019-12-03 | 2019-12-03 |  | 2019-12-03 | 2019-12-03 | 0.25d | 119.75d |  | start no earlier than 2019-12-03 | Project Manager | 2h | 200 | 200 |
| 9 | 1.1.7 | Spotkanie okresowe 7 |  | 0.25d | 2019-12-10 | 2019-12-10 |  | 2019-12-10 | 2019-12-10 | 0.25d | 114.75d |  | start no earlier than 2019-12-10 | Project Manager | 2h | 200 | 200 |
| 10 | 1.1.8 | Spotkanie okresowe 8 |  | 0.25d | 2019-12-17 | 2019-12-17 |  | 2019-12-17 | 2019-12-17 | 0.25d | 109.75d |  | start no earlier than 2019-12-17 | Project Manager | 2h | 200 | 200 |
| 11 | 1.1.9 | Spotkanie okresowe 9 |  | 0.25d | 2019-12-31 | 2019-12-31 |  | 2019-12-31 | 2019-12-31 | 0.25d | 104.75d |  | start no earlier than 2019-12-31 | Project Manager | 2h | 200 | 200 |
| 12 | 1.1.10 | Spotkanie okresowe 10 |  | 0.25d | 2020-01-07 | 2020-01-07 |  | 2020-01-07 | 2020-01-07 | 0.25d | 101.75d |  | start no earlier than 2020-01-07 | Project Manager | 2h | 200 | 200 |
| 13 | 1.1.11 | Spotkanie okresowe 11 |  | 0.25d | 2020-01-14 | 2020-01-14 |  | 2020-01-14 | 2020-01-14 | 0.25d | 96.75d |  | start no earlier than 2020-01-14 | Project Manager | 2h | 200 | 200 |
| 14 | 1.1.12 | Spotkanie okresowe 12 |  | 0.25d | 2020-01-21 | 2020-01-21 |  | 2020-01-21 | 2020-01-21 | 0.25d | 91.75d |  | start no earlier than 2020-01-21 | Project Manager | 2h | 200 | 200 |
| 15 | 1.1.13 | Spotkanie okresowe 13 |  | 0.25d | 2020-01-28 | 2020-01-28 |  | 2020-01-28 | 2020-01-28 | 0.25d | 86.75d |  | start no earlier than 2020-01-28 | Project Manager | 2h | 200 | 200 |
| 16 | 1.1.14 | Spotkanie okresowe 14 |  | 0.25d | 2020-02-04 | 2020-02-04 |  | 2020-02-04 | 2020-02-04 | 0.25d | 81.75d |  | start no earlier than 2020-02-04 | Project Manager | 2h | 200 | 200 |
| 17 | 1.1.15 | Spotkanie okresowe 15 |  | 0.25d | 2020-02-11 | 2020-02-11 |  | 2020-02-11 | 2020-02-11 | 0.25d | 76.75d |  | start no earlier than 2020-02-11 | Project Manager | 2h | 200 | 200 |
| 18 | 1.1.16 | Spotkanie okresowe 16 |  | 0.25d | 2020-02-18 | 2020-02-18 |  | 2020-02-18 | 2020-02-18 | 0.25d | 71.75d |  | start no earlier than 2020-02-18 | Project Manager | 2h | 200 | 200 |
| 19 | 1.1.17 | Spotkanie okresowe 17 |  | 0.25d | 2020-02-25 | 2020-02-25 |  | 2020-02-25 | 2020-02-25 | 0.25d | 66.75d |  | start no earlier than 2020-02-25 | Project Manager | 2h | 200 | 200 |
| 20 | 1.1.18 | Spotkanie okresowe 18 |  | 0.25d | 2020-03-03 | 2020-03-03 |  | 2020-03-03 | 2020-03-03 | 0.25d | 61.75d |  | start no earlier than 2020-03-03 | Project Manager | 2h | 200 | 200 |
| 21 | 1.1.19 | Spotkanie okresowe 19 |  | 0.25d | 2020-03-10 | 2020-03-10 |  | 2020-03-10 | 2020-03-10 | 0.25d | 56.75d |  | start no earlier than 2020-03-10 | Project Manager | 2h | 200 | 200 |
| 22 | 1.1.20 | Spotkanie okresowe 20 |  | 0.25d | 2020-03-17 | 2020-03-17 |  | 2020-03-17 | 2020-03-17 | 0.25d | 51.75d |  | start no earlier than 2020-03-17 | Project Manager | 2h | 200 | 200 |
| 23 | 1.1.21 | Spotkanie okresowe 21 |  | 0.25d | 2020-03-24 | 2020-03-24 |  | 2020-03-24 | 2020-03-24 | 0.25d | 46.75d |  | start no earlier than 2020-03-24 | Project Manager | 2h | 200 | 200 |
| 24 | 1.1.22 | Spotkanie okresowe 22 |  | 0.25d | 2020-03-31 | 2020-03-31 |  | 2020-03-31 | 2020-03-31 | 0.25d | 41.75d |  | start no earlier than 2020-03-31 | Project Manager | 2h | 200 | 200 |
| 25 | 1.1.23 | Spotkanie okresowe 23 |  | 0.25d | 2020-04-07 | 2020-04-07 |  | 2020-04-07 | 2020-04-07 | 0.25d | 36.75d |  | start no earlier than 2020-04-07 | Project Manager | 2h | 200 | 200 |
| 26 | 1.2 | Zarządzanie projektem |  | 145d | 2019-10-28 | 2020-06-02 | 31SS, 83FF | 2019-10-28 | 2020-06-02 | 145d | 0d |  | start no earlier than 2019-10-28 | Lokal | 1160h | 58,000 | 58,000 |
| 27 | 1.3 | Punkt kontrolny 1 - 30% projektu | milestone | 0d | 2020-01-07 | 2020-01-07 | 26SS+3% | 2020-01-07 | 2020-01-07 | 0d | 101.5d |  |  |  |  |  |  |
| 28 | 1.4 | Punkt kontorlny 2 - 50% | milestone | 0d | 2020-02-17 | 2020-02-17 | 26SS+5% | 2020-02-17 | 2020-02-17 | 0d | 72.5d |  |  |  |  |  |  |
| 29 | 1.5 | Punkt kontrolny 3 - 75% | milestone | 0d | 2020-04-07 | 2020-04-07 | 26SS+7.5% | 2020-04-07 | 2020-04-07 | 0d | 36.25d |  |  |  |  |  |  |
| 30 | 1.6 | Punkt kontrolny 4 - 100% | milestone | 0d | 2020-06-02 | 2020-06-02 | 26 | 2020-06-02 | 2020-06-02 | 0d | 0d |  |  |  |  |  |  |
| 31 | 1.7 | Stworzenie karty projektu |  | 10d? | 2019-10-28 | 2019-11-08 |  | 2019-10-28 | 2019-11-08 | 10d? | 0d |  | start no earlier than 2019-10-28 | Project Manager Assistant; PC | 160h | 20,120.12 | 20,120.12 |
| 32 | 1.8 | Zatwierdzenie karty projektu i przyjęcie do realizacji | milestone | 0d | 2019-11-13 | 2019-11-13 | 31FS+2d | 2019-11-13 | 2019-11-13 | 0d | 0d |  |  | Project Manager |  |  |  |
| 33 | 1.9 | Planowanie pracy |  | 10.5d | 2019-11-14 | 2019-11-28 | 32 | 2019-11-14 | 2019-11-28 | 10.5d | 6d |  |  | Project Manager; PC; OS; Oprogramowanie | 336h | 8,565.38 | 8,565.38 |
| 34 | 1.10 | Rekrutacja pracowników |  | 14d? | 2019-11-14 | 2019-12-03 | 32 | 2019-11-14 | 2019-12-03 | 14d? | 3d |  | start no earlier than 2019-11-12 | HR Manager Assistant [50%]; PC; Oprogramowanie; OS | 392h | 5,120.5 | 5,120.5 |
| 35 | 1.11 | Pozyskiwanie zasobów do pracy |  | 14d? | 2019-11-14 | 2019-12-03 | 32 | 2019-11-14 | 2019-12-03 | 14d? | 3d |  |  | HR Manager; PC; OS; Oprogramowanie | 448h | 17,020.5 | 17,020.5 |
| 36 | 1.12 | Organizacja stanowisk pracy |  | 14d? | 2019-11-14 | 2019-12-03 | 32 | 2019-11-14 | 2019-12-03 | 14d? | 0d |  |  | HR Manager Assistant [50%]; PC; Oprogramowanie; OS | 392h | 5,120.5 | 5,120.5 |
| 37 | 1.13 | Delegowanie zasobów do pracy |  | 2d | 2019-12-04 | 2019-12-05 | 36 | 2019-12-04 | 2019-12-05 | 2d | 117d |  | start no earlier than 2019-11-28 | HR Manager Assistant; PC; Oprogramowanie; OS | 64h | 1,431.5 | 1,431.5 |
| 38 | 1.14 | Zapewnienie możliwości stworzenia odpowiedniej architektury aplikacji |  | 15d? | 2019-12-30 | 2020-01-27 | 116 | 2019-12-30 | 2020-01-27 | 15d? | 7.5d | 0d |  | Project Manager Assistant; PC; OS; Oprogramowanie | 448h | 9,740.5 | 9,740.5 |

| ID | WBS | Task | Type | Duration | Start | Finish | Predecessors | Baseline start | Baseline finish | Baseline duration | Total slack | Free slack | Constraint | Resources | Work | Cost | Baseline cost |
| --- | --- | --- | --- | --- | --- | --- | --- | --- | --- | --- | --- | --- | --- | --- | --- | --- | --- |
| 39 | 1.15 | **Tworzenie dokumentacji projektu** |  | 94d | 2019-11-15 | 2020-04-03 |  | 2019-11-15 | 2020-04-03 | 94d | 38d |  |  |  | 640h | 19,515 | 19,515 |
| 40 | 1.15.1 | Tworzenie dokumentacji projektu 1 |  | 1d | 2019-11-15 | 2019-11-15 |  | 2019-11-15 | 2019-11-15 | 1d | 131d |  | start no earlier than 2019-11-15 | Documentation Writer; PC; Oprogramowanie; OS | 32h | 975.75 | 975.75 |
| 41 | 1.15.2 | Tworzenie dokumentacji projektu 2 |  | 1d | 2019-11-22 | 2019-11-22 |  | 2019-11-22 | 2019-11-22 | 1d | 126d |  | start no earlier than 2019-11-22 | Documentation Writer; PC; Oprogramowanie; OS | 32h | 975.75 | 975.75 |
| 42 | 1.15.3 | Tworzenie dokumentacji projektu 3 |  | 1d | 2019-11-29 | 2019-11-29 |  | 2019-11-29 | 2019-11-29 | 1d | 121d |  | start no earlier than 2019-11-29 | Documentation Writer; PC; Oprogramowanie; OS | 32h | 975.75 | 975.75 |
| 43 | 1.15.4 | Tworzenie dokumentacji projektu 4 |  | 1d | 2019-12-06 | 2019-12-06 |  | 2019-12-06 | 2019-12-06 | 1d | 116d |  | start no earlier than 2019-12-06 | Documentation Writer; PC; Oprogramowanie; OS | 32h | 975.75 | 975.75 |
| 44 | 1.15.5 | Tworzenie dokumentacji projektu 5 |  | 1d | 2019-12-13 | 2019-12-13 |  | 2019-12-13 | 2019-12-13 | 1d | 111d |  | start no earlier than 2019-12-13 | Documentation Writer; PC; Oprogramowanie; OS | 32h | 975.75 | 975.75 |
| 45 | 1.15.6 | Tworzenie dokumentacji projektu 6 |  | 1d | 2019-12-20 | 2019-12-20 |  | 2019-12-20 | 2019-12-20 | 1d | 106d |  | start no earlier than 2019-12-20 | Documentation Writer; PC; Oprogramowanie; OS | 32h | 975.75 | 975.75 |
| 46 | 1.15.7 | Tworzenie dokumentacji projektu 7 |  | 1d | 2020-01-03 | 2020-01-03 |  | 2020-01-03 | 2020-01-03 | 1d | 102d |  | start no earlier than 2020-01-03 | Documentation Writer; PC; Oprogramowanie; OS | 32h | 975.75 | 975.75 |
| 47 | 1.15.8 | Tworzenie dokumentacji projektu 8 |  | 1d | 2020-01-10 | 2020-01-10 |  | 2020-01-10 | 2020-01-10 | 1d | 98d |  | start no earlier than 2020-01-10 | Documentation Writer; PC; Oprogramowanie; OS | 32h | 975.75 | 975.75 |
| 48 | 1.15.9 | Tworzenie dokumentacji projektu 9 |  | 1d | 2020-01-17 | 2020-01-17 |  | 2020-01-17 | 2020-01-17 | 1d | 93d |  | start no earlier than 2020-01-17 | Documentation Writer; PC; Oprogramowanie; OS | 32h | 975.75 | 975.75 |
| 49 | 1.15.10 | Tworzenie dokumentacji projektu 10 |  | 1d | 2020-01-24 | 2020-01-24 |  | 2020-01-24 | 2020-01-24 | 1d | 88d |  | start no earlier than 2020-01-24 | Documentation Writer; PC; Oprogramowanie; OS | 32h | 975.75 | 975.75 |
| 50 | 1.15.11 | Tworzenie dokumentacji projektu 11 |  | 1d | 2020-01-31 | 2020-01-31 |  | 2020-01-31 | 2020-01-31 | 1d | 83d |  | start no earlier than 2020-01-31 | Documentation Writer; PC; Oprogramowanie; OS | 32h | 975.75 | 975.75 |
| 51 | 1.15.12 | Tworzenie dokumentacji projektu 12 |  | 1d | 2020-02-07 | 2020-02-07 |  | 2020-02-07 | 2020-02-07 | 1d | 78d |  | start no earlier than 2020-02-07 | Documentation Writer; PC; Oprogramowanie; OS | 32h | 975.75 | 975.75 |
| 52 | 1.15.13 | Tworzenie dokumentacji projektu 13 |  | 1d | 2020-02-14 | 2020-02-14 |  | 2020-02-14 | 2020-02-14 | 1d | 73d |  | start no earlier than 2020-02-14 | Documentation Writer; PC; Oprogramowanie; OS | 32h | 975.75 | 975.75 |
| 53 | 1.15.14 | Tworzenie dokumentacji projektu 14 |  | 1d | 2020-02-21 | 2020-02-21 |  | 2020-02-21 | 2020-02-21 | 1d | 68d |  | start no earlier than 2020-02-21 | Documentation Writer; PC; Oprogramowanie; OS | 32h | 975.75 | 975.75 |
| 54 | 1.15.15 | Tworzenie dokumentacji projektu 15 |  | 1d | 2020-02-28 | 2020-02-28 |  | 2020-02-28 | 2020-02-28 | 1d | 63d |  | start no earlier than 2020-02-28 | Documentation Writer; PC; Oprogramowanie; OS | 32h | 975.75 | 975.75 |
| 55 | 1.15.16 | Tworzenie dokumentacji projektu 16 |  | 1d | 2020-03-06 | 2020-03-06 |  | 2020-03-06 | 2020-03-06 | 1d | 58d |  | start no earlier than 2020-03-06 | Documentation Writer; PC; Oprogramowanie; OS | 32h | 975.75 | 975.75 |
| 56 | 1.15.17 | Tworzenie dokumentacji projektu 17 |  | 1d | 2020-03-13 | 2020-03-13 |  | 2020-03-13 | 2020-03-13 | 1d | 53d |  | start no earlier than 2020-03-13 | Documentation Writer; PC; Oprogramowanie; OS | 32h | 975.75 | 975.75 |
| 57 | 1.15.18 | Tworzenie dokumentacji projektu 18 |  | 1d | 2020-03-20 | 2020-03-20 |  | 2020-03-20 | 2020-03-20 | 1d | 48d |  | start no earlier than 2020-03-20 | Documentation Writer; PC; Oprogramowanie; OS | 32h | 975.75 | 975.75 |
| 58 | 1.15.19 | Tworzenie dokumentacji projektu 19 |  | 1d | 2020-03-27 | 2020-03-27 |  | 2020-03-27 | 2020-03-27 | 1d | 43d |  | start no earlier than 2020-03-27 | Documentation Writer; PC; Oprogramowanie; OS | 32h | 975.75 | 975.75 |
| 59 | 1.15.20 | Tworzenie dokumentacji projektu 20 |  | 1d | 2020-04-03 | 2020-04-03 |  | 2020-04-03 | 2020-04-03 | 1d | 38d |  | start no earlier than 2020-04-03 | Documentation Writer; PC; Oprogramowanie; OS | 32h | 975.75 | 975.75 |
| 60 | 1.16 | Organizowanie osób do testów z grupy interesariuszy |  | 5d | 2020-02-03 | 2020-02-10 | 104 | 2020-02-03 | 2020-02-10 | 5d | 55d | 0d | start no earlier than 2020-02-02 | Project Manager Assistant; PC; OS; Oprogramowanie | 160h | 3,478.75 | 3,478.75 |
| 61 | 1.17 | Przeprowadzanie testów z interesariuszami |  | 5d | 2020-02-11 | 2020-02-18 | 60 | 2020-02-11 | 2020-02-18 | 5d | 55d |  | start no earlier than 2020-02-09 | Project Manager Assistant; PC; Oprogramowanie; OS | 160h | 3,478.75 | 3,478.75 |
| 62 | 1.18 | **Tworzenie raportów z postępu projektu** |  | 94d | 2019-11-14 | 2020-04-02 |  | 2019-11-14 | 2020-04-02 | 94d | 39d |  |  |  | 640h | 13,915 | 13,915 |
| 63 | 1.18.1 | Tworzenie raportów z postępu projektu 1 |  | 1d | 2019-11-14 | 2019-11-14 |  | 2019-11-14 | 2019-11-14 | 1d | 132d |  | start no earlier than 2019-11-14 | Project Manager Assistant; PC; OS; Oprogramowanie | 32h | 695.75 | 695.75 |
| 64 | 1.18.2 | Tworzenie raportów z postępu projektu 2 |  | 1d | 2019-11-21 | 2019-11-21 |  | 2019-11-21 | 2019-11-21 | 1d | 127d |  | start no earlier than 2019-11-21 | Project Manager Assistant; PC; OS; Oprogramowanie | 32h | 695.75 | 695.75 |
| 65 | 1.18.3 | Tworzenie raportów z postępu projektu 3 |  | 1d | 2019-11-28 | 2019-11-28 |  | 2019-11-28 | 2019-11-28 | 1d | 122d |  | start no earlier than 2019-11-28 | Project Manager Assistant; PC; OS; Oprogramowanie | 32h | 695.75 | 695.75 |
| 66 | 1.18.4 | Tworzenie raportów z postępu projektu 4 |  | 1d | 2019-12-05 | 2019-12-05 |  | 2019-12-05 | 2019-12-05 | 1d | 117d |  | start no earlier than 2019-12-05 | Project Manager Assistant; PC; OS; Oprogramowanie | 32h | 695.75 | 695.75 |
| 67 | 1.18.5 | Tworzenie raportów z postępu projektu 5 |  | 1d | 2019-12-12 | 2019-12-12 |  | 2019-12-12 | 2019-12-12 | 1d | 112d |  | start no earlier than 2019-12-12 | Project Manager Assistant; PC; OS; Oprogramowanie | 32h | 695.75 | 695.75 |
| 68 | 1.18.6 | Tworzenie raportów z postępu projektu 6 |  | 1d | 2019-12-19 | 2019-12-19 |  | 2019-12-19 | 2019-12-19 | 1d | 107d |  | start no earlier than 2019-12-19 | Project Manager Assistant; PC; OS; Oprogramowanie | 32h | 695.75 | 695.75 |
| 69 | 1.18.7 | Tworzenie raportów z postępu projektu 7 |  | 1d | 2020-01-02 | 2020-01-02 |  | 2020-01-02 | 2020-01-02 | 1d | 103d |  | start no earlier than 2020-01-02 | Project Manager Assistant; PC; OS; Oprogramowanie | 32h | 695.75 | 695.75 |
| 70 | 1.18.8 | Tworzenie raportów z postępu projektu 8 |  | 1d | 2020-01-09 | 2020-01-09 |  | 2020-01-09 | 2020-01-09 | 1d | 99d |  | start no earlier than 2020-01-09 | Project Manager Assistant; PC; OS; Oprogramowanie | 32h | 695.75 | 695.75 |
| 71 | 1.18.9 | Tworzenie raportów z postępu projektu 9 |  | 1d | 2020-01-16 | 2020-01-16 |  | 2020-01-16 | 2020-01-16 | 1d | 94d |  | start no earlier than 2020-01-16 | Project Manager Assistant; PC; OS; Oprogramowanie | 32h | 695.75 | 695.75 |
| 72 | 1.18.10 | Tworzenie raportów z postępu projektu 10 |  | 1d | 2020-01-23 | 2020-01-23 |  | 2020-01-23 | 2020-01-23 | 1d | 89d |  | start no earlier than 2020-01-23 | Project Manager Assistant; PC; OS; Oprogramowanie | 32h | 695.75 | 695.75 |
| 73 | 1.18.11 | Tworzenie raportów z postępu projektu 11 |  | 1d | 2020-01-30 | 2020-01-30 |  | 2020-01-30 | 2020-01-30 | 1d | 84d |  | start no earlier than 2020-01-30 | Project Manager Assistant; PC; OS; Oprogramowanie | 32h | 695.75 | 695.75 |
| 74 | 1.18.12 | Tworzenie raportów z postępu projektu 12 |  | 1d | 2020-02-06 | 2020-02-06 |  | 2020-02-06 | 2020-02-06 | 1d | 79d |  | start no earlier than 2020-02-06 | Project Manager Assistant; PC; OS; Oprogramowanie | 32h | 695.75 | 695.75 |
| 75 | 1.18.13 | Tworzenie raportów z postępu projektu 13 |  | 1d | 2020-02-13 | 2020-02-13 |  | 2020-02-13 | 2020-02-13 | 1d | 74d |  | start no earlier than 2020-02-13 | Project Manager Assistant; PC; OS; Oprogramowanie | 32h | 695.75 | 695.75 |
| 76 | 1.18.14 | Tworzenie raportów z postępu projektu 14 |  | 1d | 2020-02-20 | 2020-02-20 |  | 2020-02-20 | 2020-02-20 | 1d | 69d |  | start no earlier than 2020-02-20 | Project Manager Assistant; PC; OS; Oprogramowanie | 32h | 695.75 | 695.75 |
| 77 | 1.18.15 | Tworzenie raportów z postępu projektu 15 |  | 1d | 2020-02-27 | 2020-02-27 |  | 2020-02-27 | 2020-02-27 | 1d | 64d |  | start no earlier than 2020-02-27 | Project Manager Assistant; PC; OS; Oprogramowanie | 32h | 695.75 | 695.75 |
| 78 | 1.18.16 | Tworzenie raportów z postępu projektu 16 |  | 1d | 2020-03-05 | 2020-03-05 |  | 2020-03-05 | 2020-03-05 | 1d | 59d |  | start no earlier than 2020-03-05 | Project Manager Assistant; PC; OS; Oprogramowanie | 32h | 695.75 | 695.75 |
| 79 | 1.18.17 | Tworzenie raportów z postępu projektu 17 |  | 1d | 2020-03-12 | 2020-03-12 |  | 2020-03-12 | 2020-03-12 | 1d | 54d |  | start no earlier than 2020-03-12 | Project Manager Assistant; PC; OS; Oprogramowanie | 32h | 695.75 | 695.75 |
| 80 | 1.18.18 | Tworzenie raportów z postępu projektu 18 |  | 1d | 2020-03-19 | 2020-03-19 |  | 2020-03-19 | 2020-03-19 | 1d | 49d |  | start no earlier than 2020-03-19 | Project Manager Assistant; PC; OS; Oprogramowanie | 32h | 695.75 | 695.75 |
| 81 | 1.18.19 | Tworzenie raportów z postępu projektu 19 |  | 1d | 2020-03-26 | 2020-03-26 |  | 2020-03-26 | 2020-03-26 | 1d | 44d |  | start no earlier than 2020-03-26 | Project Manager Assistant; PC; OS; Oprogramowanie | 32h | 695.75 | 695.75 |
| 82 | 1.18.20 | Tworzenie raportów z postępu projektu 20 |  | 1d | 2020-04-02 | 2020-04-02 |  | 2020-04-02 | 2020-04-02 | 1d | 39d |  | start no earlier than 2020-04-02 | Project Manager Assistant; PC; OS; Oprogramowanie | 32h | 695.75 | 695.75 |
| 83 | 1.19 | Zamknięcie projektu | milestone | 0d | 2020-06-02 | 2020-06-02 | 153FS+5d | 2020-06-02 | 2020-06-02 | 0d | 0d |  |  |  |  |  |  |
| 84 | 1.20 | Utworzenie zespołu projektowego | milestone | 0d | 2019-12-06 | 2019-12-06 | 36FS+3d, 35, 34, 33 | 2019-12-06 | 2019-12-06 | 0d | 0d |  | finish no earlier than 2019-11-28 |  |  |  |  |

| ID | WBS | Task | Type | Duration | Start | Finish | Predecessors | Baseline start | Baseline finish | Baseline duration | Total slack | Free slack | Constraint | Resources | Work | Cost | Baseline cost |
| --- | --- | --- | --- | --- | --- | --- | --- | --- | --- | --- | --- | --- | --- | --- | --- | --- | --- |
| 85 | 2 | **Prowadzenie badań** |  | 63.5d? | 2019-12-09 | 2020-03-16 |  | 2019-12-09 | 2020-03-16 | 63.5d? | 12d |  |  |  | 3052h | 46,607.6 | 46,607.6 |
| 86 | 2.1 | Dokumentowanie wiedzy książkowej |  | 15d? | 2019-12-09 | 2020-01-15 | 84 | 2019-12-09 | 2020-01-15 | 15d? | 14.5d | 0d | start no earlier than 2019-11-28 | Documentation Writer; PC; OS; Oprogramowanie; Książki o kawie | 600h | 14,639.4 | 14,639.4 |
| 87 | 2.2 | Research zasobów potrzebnych do badań |  | 1d? | 2019-12-09 | 2019-12-09 | 84 | 2019-12-09 | 2019-12-09 | 1d? | 12d | 0d | start no earlier than 2019-11-28 | Researcher Assistant; PC; Oprogramowanie; OS | 32h | 255.75 | 255.75 |
| 88 | 2.3 | Organizacja potrzenych do badań zasobów |  | 4d? | 2019-12-10 | 2019-12-16 | 87 | 2019-12-10 | 2019-12-16 | 4d? | 12d | 0d |  | Project Manager Assistant; PC; OS; Oprogramowanie | 128h | 2,783 | 2,783 |
| 89 | 2.4 | Przeprowadzenie badań |  | 22d? | 2019-12-18 | 2020-01-16 | 88 | 2019-12-18 | 2020-01-16 | 22d? | 12d | 0d | start no earlier than 2019-11-28 | Senior Researcher; Kawa; Sprzęt do kawy; Książki o kawie | 480h | 7,578.75 | 7,578.75 |
| 90 | 2.5 | Sporządzenie raportów z badań |  | 4d? | 2020-01-17 | 2020-01-22 | 89 | 2020-01-17 | 2020-01-22 | 4d? | 12d | 0d |  | Researcher Assistant; PC; Oprogramowanie; OS | 128h | 1,023 | 1,023 |
| 91 | 2.6 | Analiza danych z badań |  | 6d? | 2020-01-23 | 2020-01-30 | 90 | 2020-01-23 | 2020-01-30 | 6d? | 14.5d | 2.5d | start no earlier than 2019-12-03 | Machine Learning Engineer; PC; Oprogramowanie; OS | 192h | 5,374.5 | 5,374.5 |
| 92 | 2.7 | Udokumentowanie wniosków z badań |  | 6d? | 2020-01-23 | 2020-02-04 | 90, 91FF | 2020-01-23 | 2020-02-04 | 6d? | 12d | 0d | start no earlier than 2019-12-18 | Documentation Writer; PC; OS; Oprogramowanie | 192h | 5,854.5 | 5,854.5 |
| 93 | 2.8 | Zebranie i spisanie podstawowych informacji o kawie dla niewdrożonych użytkowników |  | 10.5d? | 2020-01-16 | 2020-01-30 | 86 | 2020-01-16 | 2020-01-30 | 10.5d? | 21.5d | 0d |  | Content Writer; PC; OS; Oprogramowanie; Książki o kawie | 420h | 2,939.58 | 2,939.58 |
| 94 | 2.9 | Zredagowanie podstawowych informacji o kawie |  | 22d? | 2020-01-30 | 2020-03-02 | 93 | 2020-01-30 | 2020-03-02 | 22d? | 21.5d | 0d |  | Content Writer; PC; OS; Oprogramowanie; Książki o kawie | 880h | 6,159.12 | 6,159.12 |
| 95 | 2.10 | Zakończenie badań | milestone | 0d | 2020-03-16 | 2020-03-16 | 94FS+10d | 2020-03-16 | 2020-03-16 | 0d | 21.5d | 0d |  |  |  |  |  |
| 96 | 3 | **Projektowanie oprogramowania** |  | 46.5d? | 2019-12-09 | 2020-02-20 |  | 2019-12-09 | 2020-02-20 | 46.5d? | 0d |  |  |  | 3798h | 73,144.68 | 73,144.68 |
| 97 | 3.1 | Specyfikacja wymagań funkcjonalnych |  | 3d? | 2019-12-09 | 2019-12-11 | 84 | 2019-12-09 | 2019-12-11 | 3d? | 0d |  | start no earlier than 2019-12-01 | Senior Software Developer; Oprogramowanie; PC; OS | 96h | 2,927.25 | 2,927.25 |
| 98 | 3.2 | Specyfikacja wymagań interfejsowych |  | 3.5d? | 2019-12-12 | 2019-12-17 | 97 | 2019-12-12 | 2019-12-17 | 3.5d? | 7.5d | 0d |  | Junior Software Developer; PC; OS; Oprogramowanie | 112h | 2,015.12 | 2,015.12 |
| 99 | 3.3 | Specyfikacja wymagań prototypu |  | 10.5d? | 2019-12-17 | 2020-01-03 | 98 | 2019-12-17 | 2020-01-03 | 10.5d? | 11d | 0d |  | Junior Software Developer; PC; OS; Oprogramowanie | 224h | 4,030.25 | 4,030.25 |
| 100 | 3.4 | Specyfikacja wymagań pełnej aplikacji |  | 9d? | 2020-01-03 | 2020-01-16 | 99 | 2020-01-03 | 2020-01-16 | 9d? | 11d |  |  | Junior Software Developer; Senior Software Developer; PC [200%]; OS [200%]; Oprogramowanie [200%] | 512h | 12,412 | 12,412 |
| 101 | 3.5 | Tworzenie makiet |  | 18d? | 2020-01-07 | 2020-01-31 | 98, 111FF+6d, 107FF+6d | 2020-01-07 | 2020-01-31 | 18d? | 0d |  |  | UI Designer; PC; OS; Oprogramowanie; Telefony | 720h | 7,137.9 | 7,137.9 |
| 102 | 3.6 | Zamówienie grafik i dźwięków do makiet |  | 1d | 2020-01-07 | 2020-01-08 | 98, 101SS | 2020-01-07 | 2020-01-08 | 1d | 26d |  | start no earlier than 2019-12-15 | Project Manager; PC; OS; Oprogramowanie; Koszt zamówienia dźwięków; Koszt zamówienia grafik | 32h | 12,815.75 | 12,815.75 |
| 103 | 3.7 | Testowanie makiet |  | 18d? | 2020-01-07 | 2020-01-31 | 98, 101FF | 2020-01-07 | 2020-01-31 | 18d? | 0d |  |  | UI Manual Tester; OS; PC; Oprogramowanie; Telefony | 720h | 7,641.9 | 7,641.9 |
| 104 | 3.8 | Zaprojektowanie systemu oceniania przepisów |  | 2d? | 2019-12-12 | 2019-12-13 | 97 | 2019-12-12 | 2019-12-13 | 2d? | 20.5d | 0d |  | Senior Software Developer; PC; OS; Oprogramowanie | 64h | 1,951.5 | 1,951.5 |
| 105 | 3.9 | Specyfikacja wymagań bazy danych do uczenia maszynowego |  | 2d? | 2019-12-16 | 2019-12-17 | 104 | 2019-12-16 | 2019-12-17 | 2d? | 20.5d | 0d |  | Machine Learning Engineer; PC; OS; Oprogramowanie | 64h | 1,791.5 | 1,791.5 |
| 106 | 3.10 | Projekt bazy danych do uczenia maszynowego |  | 6d? | 2019-12-18 | 2019-12-30 | 105 | 2019-12-18 | 2019-12-30 | 6d? | 20.5d |  |  | Machine Learning Engineer; PC; OS; Oprogramowanie | 136h | 3,593 | 3,593 |
| 107 | 3.11 | Zaprojektowanie miniencyklopedii |  | 4d? | 2019-12-12 | 2019-12-17 | 97 | 2019-12-12 | 2019-12-17 | 4d? | 3d | 2d |  | Content Writer; Senior Researcher; Telefony [200%]; OS [200%]; PC [200%]; Oprogramowanie [200%] | 320h | 2,852.4 | 2,852.4 |
| 108 | 3.12 | Zaprojektowanie bazy danych dla miniencyklopedii |  | 6.5d? | 2020-01-20 | 2020-01-28 | 107 | 2020-01-20 | 2020-01-28 | 6.5d? | 3d |  |  | Junior Software Developer; PC; OS; Oprogramowanie; Telefony | 260h | 3,799.57 | 3,799.57 |
| 109 | 3.13 | Utworzenie dokumentu z projektem aplikacji |  | 5d? | 2020-02-05 | 2020-02-13 | 101, 103, 106, 108, 100 | 2020-02-05 | 2020-02-13 | 5d? | 0d |  | start no earlier than 2020-01-04 | Documentation Writer; PC; OS; Oprogramowanie | 160h | 4,878.75 | 4,878.75 |
| 110 | 3.14 | Powstanie kompletnego projektu aplikacji | milestone | 0d | 2020-02-20 | 2020-02-20 | 109FS+5d | 2020-02-20 | 2020-02-20 | 0d | 28d | 0d |  |  |  |  |  |
| 111 | 3.15 | Zaprojektowanie działania asystenta kawy |  | 11.5d? | 2019-12-16 | 2020-01-23 | 97 | 2019-12-16 | 2020-01-23 | 11.5d? | 0d |  |  | Senior Software Developer [50%]; PC; OS; Oprogramowanie; Telefony | 378h | 5,297.77 | 5,297.77 |

| ID | WBS | Task | Type | Duration | Start | Finish | Predecessors | Baseline start | Baseline finish | Baseline duration | Total slack | Free slack | Constraint | Resources | Work | Cost | Baseline cost |
| --- | --- | --- | --- | --- | --- | --- | --- | --- | --- | --- | --- | --- | --- | --- | --- | --- | --- |
| 112 | 4 | **Wytwarzanie oprogramowania** |  | 93.5d? | 2019-12-17 | 2020-05-11 |  | 2019-12-17 | 2020-05-11 | 93.5d? | 7.5d |  |  |  | 5652h | 119,842.45 | 119,842.45 |
| 113 | 4.1 | Projektowanie algorytmów dobierających przepis |  | 5d? | 2020-02-05 | 2020-02-11 | 92 | 2020-02-05 | 2020-02-11 | 5d? | 12d | 0d |  | Machine Learning Engineer; PC; OS; Oprogramowanie | 160h | 4,478.75 | 4,478.75 |
| 114 | 4.2 | Tworzenie prototypów systemów dobierających przepis |  | 12.5d? | 2020-02-12 | 2020-02-28 | 113 | 2020-02-12 | 2020-02-28 | 12.5d? | 12d | 0d |  | Machine Learning Engineer; OS; PC; Oprogramowanie; Telefony | 500h | 11,306.88 | 11,306.88 |
| 115 | 4.3 | Wybranie najlepszego prototypu |  | 2.5d? | 2020-02-28 | 2020-03-03 | 114 | 2020-02-28 | 2020-03-03 | 2.5d? | 12d | 0d |  | Senior Researcher; PC; OS; Oprogramowanie; Telefony | 100h | 1,061.38 | 1,061.38 |
| 116 | 4.4 | Research architektury aplikacji |  | 4.5d? | 2019-12-17 | 2019-12-30 | 98 | 2019-12-17 | 2019-12-30 | 4.5d? | 7.5d | 0d |  | Senior Software Developer; OS; PC; Oprogramowanie | 128h | 3,903 | 3,903 |
| 117 | 4.5 | Konfiguracja architektury aplikacji |  | 4.5d? | 2020-01-27 | 2020-01-31 | 38 | 2020-01-27 | 2020-01-31 | 4.5d? | 8.5d |  |  | Senior Software Developer; PC; OS; Oprogramowanie | 144h | 4,390.88 | 4,390.88 |
| 118 | 4.6 | Implementacja algorytmów dobierających przepis |  | 7d? | 2020-03-04 | 2020-03-12 | 117, 115 | 2020-03-04 | 2020-03-12 | 7d? | 12d | 0d | start no earlier than 2020-01-04 | Machine Learning Engineer; PC; OS; Oprogramowanie; Telefony | 280h | 6,331.85 | 6,331.85 |
| 119 | 4.7 | Implementacja makiet jako funkcjonalnego interfejsu |  | 26d? | 2020-02-13 | 2020-03-30 | 117, 109, 102 | 2020-02-13 | 2020-03-30 | 26d? | 0d |  |  | Junior Software Developer; PC; OS; Oprogramowanie; Telefony | 1040h | 15,198.3 | 15,198.3 |
| 120 | 4.8 | Testowanie funkcjonalności |  | 26d | 2020-02-20 | 2020-03-27 | 119SS+2%, 117, 109 | 2020-02-20 | 2020-03-27 | 26d | 27.3d |  | start no earlier than 2020-01-13 | Manual Tester; PC; OS; Oprogramowanie; Telefony | 1040h | 11,038.3 | 11,038.3 |
| 121 | 4.9 | Przygotowanie prototypu aplikacji |  | 8.5d? | 2020-04-06 | 2020-04-16 | 119, 118 | 2020-04-06 | 2020-04-16 | 8.5d? | 0d |  |  | Senior Software Developer; Telefony; PC; OS; Oprogramowanie | 220h | 5,415.02 | 5,415.02 |
| 122 | 4.10 | Powstanie funkcjonalnego prototypu | milestone | 0d | 2020-05-04 | 2020-05-04 | 121FS+11d | 2020-05-04 | 2020-05-04 | 0d | 21d |  |  |  |  |  |  |
| 123 | 4.11 | Implementacja systemu ocen przepisów |  | 6.5d? | 2020-03-13 | 2020-03-23 | 118 | 2020-03-13 | 2020-03-23 | 6.5d? | 16d | 0d |  | Junior Software Developer; PC; OS; Oprogramowanie | 208h | 3,742.38 | 3,742.38 |
| 124 | 4.12 | Implementacja bazy danych do uczenia maszynowego |  | 2.5d? | 2020-03-23 | 2020-03-25 | 123 | 2020-03-23 | 2020-03-25 | 2.5d? | 16d | 0d |  | Machine Learning Engineer; PC; OS; Oprogramowanie | 80h | 2,239.38 | 2,239.38 |
| 125 | 4.13 | Prototypowanie uczenia maszynowego |  | 9d? | 2020-03-26 | 2020-04-07 | 124 | 2020-03-26 | 2020-04-07 | 9d? | 16d | 0d |  | Machine Learning Engineer; PC; OS; Oprogramowanie | 288h | 8,061.75 | 8,061.75 |
| 126 | 4.14 | Implementacja uczenia maszynowego |  | 7d? | 2020-04-08 | 2020-04-16 | 125 | 2020-04-08 | 2020-04-16 | 7d? | 16d |  |  | Machine Learning Engineer; PC; OS; Oprogramowanie | 128h | 3,583 | 3,583 |
| 127 | 4.15 | Implementacja bazy danych miniencyklopedii |  | 10.5d? | 2020-02-20 | 2020-03-05 | 110 | 2020-02-20 | 2020-03-05 | 10.5d? | 28d | 6.5d |  | Senior Software Developer; PC; OS; Oprogramowanie | 336h | 10,245.38 | 10,245.38 |
| 128 | 4.16 | Uzupełnienie bazy danych miniencyklopedii |  | 15d? | 2020-03-16 | 2020-04-06 | 127, 95 | 2020-03-16 | 2020-04-06 | 15d? | 21.5d |  |  | Senior Software Developer; PC; OS; Oprogramowanie | 480h | 14,636.25 | 14,636.25 |
| 129 | 4.17 | Utworzenie możliwości zdalnego umieszczania reklam w aplikacji |  | 7d | 2020-04-17 | 2020-04-27 | 121 | 2020-04-17 | 2020-04-27 | 7d | 0d |  |  | Senior Software Developer; Telefony; PC; OS; Oprogramowanie | 280h | 6,891.85 | 6,891.85 |
| 130 | 4.18 | Oddanie w pełni funkcjonalnej aplikacji | milestone | 0d | 2020-05-11 | 2020-05-11 | 119, 127, 120, 126, 129FS+9d, 146FF, 128, 61 | 2020-05-11 | 2020-05-11 | 0d | 0d |  |  |  |  |  |  |
| 131 | 4.19 | **Prowadzenie dokumentacji** |  | 65d | 2019-12-17 | 2020-03-26 |  | 2019-12-17 | 2020-03-26 | 65d | 44.5d |  |  |  | 240h | 7,318.12 | 7,318.12 |
| 132 | 4.19.1 | Prowadzenie dokumentacji 1 |  | 0.5d | 2019-12-17 | 2019-12-17 | 116SS | 2019-12-17 | 2019-12-17 | 0.5d | 109d |  | start no earlier than 2019-12-12 | Documentation Writer; PC; OS; Oprogramowanie | 16h | 487.88 | 487.88 |
| 133 | 4.19.2 | Prowadzenie dokumentacji 2 |  | 0.5d | 2019-12-19 | 2019-12-19 |  | 2019-12-19 | 2019-12-19 | 0.5d | 107.5d |  | start no earlier than 2019-12-19 | Documentation Writer; PC; OS; Oprogramowanie | 16h | 487.88 | 487.88 |
| 134 | 4.19.3 | Prowadzenie dokumentacji 3 |  | 0.5d | 2020-01-02 | 2020-01-02 |  | 2020-01-02 | 2020-01-02 | 0.5d | 103.5d |  | start no earlier than 2020-01-02 | Documentation Writer; PC; OS; Oprogramowanie | 16h | 487.88 | 487.88 |
| 135 | 4.19.4 | Prowadzenie dokumentacji 4 |  | 0.5d | 2020-01-09 | 2020-01-09 |  | 2020-01-09 | 2020-01-09 | 0.5d | 99.5d |  | start no earlier than 2020-01-09 | Documentation Writer; PC; OS; Oprogramowanie | 16h | 487.88 | 487.88 |
| 136 | 4.19.5 | Prowadzenie dokumentacji 5 |  | 0.5d | 2020-01-16 | 2020-01-16 |  | 2020-01-16 | 2020-01-16 | 0.5d | 94.5d |  | start no earlier than 2020-01-16 | Documentation Writer; PC; OS; Oprogramowanie | 16h | 487.88 | 487.88 |
| 137 | 4.19.6 | Prowadzenie dokumentacji 6 |  | 0.5d | 2020-01-23 | 2020-01-23 |  | 2020-01-23 | 2020-01-23 | 0.5d | 89.5d |  | start no earlier than 2020-01-23 | Documentation Writer; PC; OS; Oprogramowanie | 16h | 487.88 | 487.88 |
| 138 | 4.19.7 | Prowadzenie dokumentacji 7 |  | 0.5d | 2020-01-30 | 2020-01-30 |  | 2020-01-30 | 2020-01-30 | 0.5d | 84.5d |  | start no earlier than 2020-01-30 | Documentation Writer; PC; OS; Oprogramowanie | 16h | 487.88 | 487.88 |
| 139 | 4.19.8 | Prowadzenie dokumentacji 8 |  | 0.5d | 2020-02-06 | 2020-02-06 |  | 2020-02-06 | 2020-02-06 | 0.5d | 79.5d |  | start no earlier than 2020-02-06 | Documentation Writer; PC; OS; Oprogramowanie | 16h | 487.88 | 487.88 |
| 140 | 4.19.9 | Prowadzenie dokumentacji 9 |  | 0.5d | 2020-02-13 | 2020-02-13 |  | 2020-02-13 | 2020-02-13 | 0.5d | 74.5d |  | start no earlier than 2020-02-13 | Documentation Writer; PC; OS; Oprogramowanie | 16h | 487.88 | 487.88 |
| 141 | 4.19.10 | Prowadzenie dokumentacji 10 |  | 0.5d | 2020-02-20 | 2020-02-20 |  | 2020-02-20 | 2020-02-20 | 0.5d | 69.5d |  | start no earlier than 2020-02-20 | Documentation Writer; PC; OS; Oprogramowanie | 16h | 487.88 | 487.88 |
| 142 | 4.19.11 | Prowadzenie dokumentacji 11 |  | 0.5d | 2020-02-27 | 2020-02-27 |  | 2020-02-27 | 2020-02-27 | 0.5d | 64.5d |  | start no earlier than 2020-02-27 | Documentation Writer; PC; OS; Oprogramowanie | 16h | 487.88 | 487.88 |
| 143 | 4.19.12 | Prowadzenie dokumentacji 12 |  | 0.5d | 2020-03-05 | 2020-03-05 |  | 2020-03-05 | 2020-03-05 | 0.5d | 59.5d |  | start no earlier than 2020-03-05 | Documentation Writer; PC; OS; Oprogramowanie | 16h | 487.88 | 487.88 |
| 144 | 4.19.13 | Prowadzenie dokumentacji 13 |  | 0.5d | 2020-03-12 | 2020-03-12 |  | 2020-03-12 | 2020-03-12 | 0.5d | 54.5d |  | start no earlier than 2020-03-12 | Documentation Writer; PC; OS; Oprogramowanie | 16h | 487.88 | 487.88 |
| 145 | 4.19.14 | Prowadzenie dokumentacji 14 |  | 0.5d | 2020-03-19 | 2020-03-19 |  | 2020-03-19 | 2020-03-19 | 0.5d | 49.5d |  | start no earlier than 2020-03-19 | Documentation Writer; PC; OS; Oprogramowanie | 16h | 487.88 | 487.88 |
| 146 | 4.19.15 | Prowadzenie dokumentacji 15 |  | 0.5d | 2020-03-26 | 2020-03-26 |  | 2020-03-26 | 2020-03-26 | 0.5d | 28.5d |  | start no earlier than 2020-03-26 | Documentation Writer; PC; OS; Oprogramowanie | 16h | 487.88 | 487.88 |

| ID | WBS | Task | Type | Duration | Start | Finish | Predecessors | Baseline start | Baseline finish | Baseline duration | Total slack | Constraint | Resources | Work | Cost | Baseline cost |
| --- | --- | --- | --- | --- | --- | --- | --- | --- | --- | --- | --- | --- | --- | --- | --- | --- |
| 147 | 5 | **Oddanie projektu** |  | 11d? | 2020-05-12 | 2020-05-26 |  | 2020-05-12 | 2020-05-26 | 11d? | 0d |  |  | 792h | 15,066.75 | 15,066.75 |
| 148 | 5.1 | Przekazanie stworzonej dokumentacji aplikacji |  | 1d? | 2020-05-12 | 2020-05-12 | 130 | 2020-05-12 | 2020-05-12 | 1d? | 5d |  | Documentation Writer; OS; PC; Oprogramowanie | 32h | 975.75 | 975.75 |
| 149 | 5.2 | Umieszczenie aplikacji na Google Play |  | 6d? | 2020-05-12 | 2020-05-19 | 130 | 2020-05-12 | 2020-05-19 | 6d? | 0d |  | Senior Software Developer [50%]; OS; PC; Oprogramowanie; Telefony | 216h | 3,027.3 | 3,027.3 |
| 150 | 5.3 | Umieszczenie aplikacji na App Store |  | 6d? | 2020-05-12 | 2020-05-19 | 130 | 2020-05-12 | 2020-05-19 | 6d? | 0d |  | Senior Software Developer [50%]; PC; OS; Oprogramowanie; Telefony | 216h | 3,027.3 | 3,027.3 |
| 151 | 5.4 | Release dla wszystkich użytkowników | milestone | 0d | 2020-05-20 | 2020-05-20 | 149FS+1d, 150FS+1d | 2020-05-20 | 2020-05-20 | 0d | 3d |  |  |  |  |  |
| 152 | 5.5 | Wdrożenie osób utrzymujących aplikację |  | 4d | 2020-05-20 | 2020-05-25 | 148, 149, 150 | 2020-05-20 | 2020-05-25 | 4d | 0d |  | Project Manager; Senior Software Developer; PC [200%]; OS [200%]; Oprogramowanie [200%]; Telefony [200%] | 320h | 7,236.4 | 7,236.4 |
| 153 | 5.6 | Oddanie projektu |  | 1d | 2020-05-26 | 2020-05-26 | 151, 148, 152 | 2020-05-26 | 2020-05-26 | 1d | 0d | start no earlier than 2020-03-22 | Project Manager | 8h | 800 | 800 |
